# NoidaProject

Schedule from MS Project, 2016-03-24 to 2016-09-29.

## Calendars

- Standard: Mon-Fri 08:00-12:00, 13:00-17:00; Sat-Sun off.

## Resources

| Resource |
| --- |
| Gaurav Data |
| Ankit and vishal |
| Mankaran |
| Ambrish |
| Naresh |
| Shatrugan |
| Dhanjay Kaushik |
| Gaurav And Ankit And Arun |
| Mankaran And Ambrish And Naresh And Shatrugan |
| Mankaran And Ambrish And Naresh And Shatrugan and Ajay Partap |
| vishal |
| vikash |
| vikas |
| Akshay |
| Gaurav Datta |
| NOIDA |
| CLIENT |

## Schedule

| ID | WBS | Task | Duration | Start | Finish | Predecessors | Total slack | Free slack | Constraint | Resources | Work |
| --- | --- | --- | --- | --- | --- | --- | --- | --- | --- | --- | --- |
| 1 | 1 | **Sprint-0** | 10d | 2016-03-24 | 2016-04-06 |  | 2d |  |  |  |  |
| 2 | 1.1 | Planning and Discussion | 10d | 2016-03-24 | 2016-04-06 |  | 2d | 0d | start no earlier than 2016-03-24 |  |  |
| 3 | 2 | **Sprint-1 (User management)** | 14d | 2016-04-07 | 2016-04-26 | 2 | 2d | 0d |  |  | 152h |
| 4 | 2.1 | Requirement Gathering & Development | 2d | 2016-04-07 | 2016-04-08 |  | 2d | 0d |  | Gaurav Datta | 16h |
| 5 | 2.2 | Requirement Review and Analysis | 1d | 2016-04-11 | 2016-04-11 | 4 | 13d |  |  | vishal | 8h |
| 6 | 2.3 | Design | 1d | 2016-04-11 | 2016-04-11 | 4 | 12d | 0d |  | vikas | 8h |
| 7 | 2.4 | Design Review | 1d | 2016-04-12 | 2016-04-12 | 6 | 12d |  |  | Gaurav Datta | 8h |
| 8 | 2.5 | Database Create | 1d | 2016-04-11 | 2016-04-11 | 4 | 13d |  |  | Ankit and vishal | 8h |
| 9 | 2.6 | Code | 7d | 2016-04-11 | 2016-04-19 | 4 | 2d | 0d |  | Mankaran And Ambrish And Naresh And Shatrugan | 56h |
| 10 | 2.7 | Code Review | 1d | 2016-04-20 | 2016-04-20 | 9 | 6d |  |  | Akshay | 8h |
| 11 | 2.8 | System Testing | 3d | 2016-04-20 | 2016-04-22 | 4, 9 | 2d | 0d |  | Dhanjay Kaushik | 24h |
| 12 | 2.9 | Bug Fixing | 2d | 2016-04-25 | 2016-04-26 | 11 | 2d |  |  | Mankaran And Ambrish And Naresh And Shatrugan | 16h |
| 13 | 3 | **Sprint-2 (Master Data)** | 14d | 2016-04-27 | 2016-05-16 | 3 | 2d | 0d |  |  | 152h |
| 14 | 3.1 | Requirement Gathering & Development | 2d | 2016-04-27 | 2016-04-28 |  | 2d | 0d |  | Gaurav Datta | 16h |
| 15 | 3.2 | Requirement Review and Analysis | 1d | 2016-04-29 | 2016-04-29 | 14 | 13d |  |  | vishal | 8h |
| 16 | 3.3 | Design | 1d | 2016-04-29 | 2016-04-29 | 14 | 12d | 0d |  | vikas | 8h |
| 17 | 3.4 | Design Review | 1d | 2016-05-02 | 2016-05-02 | 16 | 12d |  |  | Gaurav Datta | 8h |
| 18 | 3.5 | Database Create | 1d | 2016-04-29 | 2016-04-29 | 14 | 13d |  |  | Ankit and vishal | 8h |
| 19 | 3.6 | Code | 7d | 2016-04-29 | 2016-05-09 | 14 | 2d | 0d |  | Mankaran And Ambrish And Naresh And Shatrugan and Ajay Partap | 56h |
| 20 | 3.7 | Code Review | 1d | 2016-05-10 | 2016-05-10 | 19 | 6d |  |  | Akshay | 8h |
| 21 | 3.8 | System Testing | 3d | 2016-05-10 | 2016-05-12 | 14, 19 | 2d | 0d |  | Dhanjay Kaushik | 24h |
| 22 | 3.9 | Bug Fixing | 2d | 2016-05-13 | 2016-05-16 | 21 | 2d |  |  | Mankaran And Ambrish And Naresh And Shatrugan and Ajay Partap | 16h |
| 23 | 4 | **Sprint-3** | 5d | 2016-05-17 | 2016-05-23 | 13 | 2d | 1d |  |  | 32h |
| 24 | 4.1 | **Comman component** | 5d | 2016-05-17 | 2016-05-23 |  | 2d |  |  |  | 32h |
| 25 | 4.1.1 | Crypto | 1d | 2016-05-17 | 2016-05-17 |  | 2d | 0d |  |  |  |
| 26 | 4.1.2 | Auditing | 1d | 2016-05-18 | 2016-05-18 | 25 | 2d | 0d |  | vishal | 8h |
| 27 | 4.1.3 | Security | 1d | 2016-05-19 | 2016-05-19 | 26 | 2d | 0d |  | Shatrugan | 8h |
| 28 | 4.1.4 | Login | 1d | 2016-05-20 | 2016-05-20 | 27 | 2d | 0d |  | Shatrugan | 8h |
| 29 | 4.1.5 | Exception Handling | 1d | 2016-05-23 | 2016-05-23 | 28 | 2d |  |  | vishal | 8h |

| ID | WBS | Task | Duration | Start | Finish | Predecessors | Total slack | Free slack | Resources | Work |
| --- | --- | --- | --- | --- | --- | --- | --- | --- | --- | --- |
| 30 | 5 | **Sprint-4 (Allotment process)** | 15d | 2016-05-25 | 2016-06-14 | 23 | 1d |  |  | 160h |
| 31 | 5.1 | Requirement Gathering & Development | 2d | 2016-05-25 | 2016-05-26 |  | 1d | 0d | Gaurav Datta | 16h |
| 32 | 5.2 | Requirement Review and Analysis | 1d | 2016-05-27 | 2016-05-27 | 31 | 13d |  | vishal | 8h |
| 33 | 5.3 | Design | 1d | 2016-05-27 | 2016-05-27 | 31 | 12d | 0d | vikas | 8h |
| 34 | 5.4 | Design Review | 1d | 2016-05-30 | 2016-05-30 | 33 | 12d |  | Gaurav Datta | 8h |
| 35 | 5.5 | Database Create | 1d | 2016-05-27 | 2016-05-27 | 31 | 13d |  | Ankit and vishal | 8h |
| 36 | 5.6 | Code | 8d | 2016-05-27 | 2016-06-07 | 31 | 1d | 0d | Mankaran And Ambrish And Naresh And Shatrugan and Ajay Partap | 64h |
| 37 | 5.7 | Code Review | 1d | 2016-06-08 | 2016-06-08 | 36 | 5d |  | Akshay | 8h |
| 38 | 5.8 | System Testing | 2d | 2016-06-08 | 2016-06-09 | 31, 36 | 1d | 0d | Dhanjay Kaushik | 16h |
| 39 | 5.9 | Bug Fixing | 3d | 2016-06-10 | 2016-06-14 | 38 | 1d |  | Mankaran And Ambrish And Naresh And Shatrugan and Ajay Partap | 24h |
| 40 | 6 | **Sprint-5(Functional,Leass Deed, Mutation)** | 15d | 2016-06-16 | 2016-07-06 | 30 | 0d |  |  | 160h |
| 41 | 6.1 | Requirement Gathering & Development | 3d | 2016-06-16 | 2016-06-20 |  | 0d |  | Gaurav Datta | 24h |
| 42 | 6.2 | Requirement Review and Analysis | 1d | 2016-06-21 | 2016-06-21 | 41 | 11d |  | vishal | 8h |
| 43 | 6.3 | Design | 2d | 2016-06-21 | 2016-06-22 | 41 | 9d | 0d | vikas | 16h |
| 44 | 6.4 | Design Review | 1d | 2016-06-23 | 2016-06-23 | 43 | 9d |  | Gaurav Datta | 8h |
| 45 | 6.5 | Database Create | 1d | 2016-06-21 | 2016-06-21 | 41 | 11d |  | Ankit and vishal | 8h |
| 46 | 6.6 | Code | 8d | 2016-06-21 | 2016-06-30 | 41 | 0d |  | Mankaran And Ambrish And Naresh And Shatrugan and Ajay Partap | 64h |
| 47 | 6.7 | Code Review | 1d | 2016-07-01 | 2016-07-01 | 46 | 3d |  | Akshay | 8h |
| 48 | 6.8 | System Testing | 2d | 2016-07-01 | 2016-07-04 | 41, 46 | 0d |  | Dhanjay Kaushik | 16h |
| 49 | 6.9 | Bug Fixing | 2d | 2016-07-05 | 2016-07-06 | 48 | 0d |  | Mankaran And Ambrish And Naresh And Shatrugan and Ajay Partap [50%] | 8h |
| 50 | 7 | **Sprint-6 (Mortgage,CIC and other)** | 16d | 2016-07-07 | 2016-07-28 | 40 | 0d |  |  | 172h |
| 51 | 7.1 | Requirement Gathering & Development | 2d | 2016-07-07 | 2016-07-08 |  | 0d |  | Gaurav Datta | 16h |
| 52 | 7.2 | Requirement Review and Analysis | 2d | 2016-07-11 | 2016-07-12 | 51 | 12d |  | vishal | 16h |
| 53 | 7.3 | Design | 2d | 2016-07-11 | 2016-07-12 | 51 | 11d | 0d | vikas | 16h |
| 54 | 7.4 | Design Review | 1d | 2016-07-13 | 2016-07-13 | 53 | 11d |  | Gaurav Datta | 8h |
| 55 | 7.5 | Database Create | 1d | 2016-07-11 | 2016-07-11 | 51 | 13d |  | Ankit and vishal | 8h |
| 56 | 7.6 | Code | 8d | 2016-07-11 | 2016-07-20 | 51 | 0d |  | Mankaran And Ambrish And Naresh And Shatrugan and Ajay Partap | 64h |
| 57 | 7.7 | Code Review | 1d | 2016-07-21 | 2016-07-21 | 56 | 5d |  | Akshay | 8h |
| 58 | 7.8 | System Testing | 3d | 2016-07-21 | 2016-07-25 | 51, 56 | 0d |  | Dhanjay Kaushik | 24h |
| 59 | 7.9 | Bug Fixing | 3d | 2016-07-26 | 2016-07-28 | 58 | 0d |  | Mankaran And Ambrish And Naresh And Shatrugan and Ajay Partap [50%] | 12h |

| ID | WBS | Task | Type | Duration | Start | Finish | Predecessors | Total slack | Free slack | Resources | Work |
| --- | --- | --- | --- | --- | --- | --- | --- | --- | --- | --- | --- |
| 60 | 8 | **Sprint-7(Reporting)** |  | 15d | 2016-07-29 | 2016-08-18 | 50 | 0d |  |  | 160h |
| 61 | 8.1 | Requirement Gathering & Development |  | 2d | 2016-07-29 | 2016-08-01 |  | 0d |  | Gaurav Datta | 16h |
| 62 | 8.2 | Requirement Review and Analysis |  | 1d | 2016-08-02 | 2016-08-02 | 61 | 12d |  | vishal | 8h |
| 63 | 8.3 | Design |  | 2d | 2016-08-02 | 2016-08-03 | 61 | 10d | 0d | vikas | 16h |
| 64 | 8.4 | Design Review |  | 1d | 2016-08-04 | 2016-08-04 | 63 | 10d |  | Gaurav Datta | 8h |
| 65 | 8.5 | Database Create |  | 1d | 2016-08-02 | 2016-08-02 | 61 | 12d |  | Ankit and vishal | 8h |
| 66 | 8.6 | Code |  | 8d | 2016-08-02 | 2016-08-11 | 61 | 0d |  | Mankaran And Ambrish And Naresh And Shatrugan and Ajay Partap | 64h |
| 67 | 8.7 | Code Review |  | 1d | 2016-08-12 | 2016-08-12 | 66 | 4d |  | Akshay | 8h |
| 68 | 8.8 | System Testing |  | 3d | 2016-08-12 | 2016-08-16 | 61, 66 | 0d |  | Dhanjay Kaushik | 24h |
| 69 | 8.9 | Bug Fixing |  | 2d | 2016-08-17 | 2016-08-18 | 68 | 0d |  | Mankaran And Ambrish And Naresh And Shatrugan and Ajay Partap [50%] | 8h |
| 70 | 9 | **Sprint-8 (System Integration )** |  | 30d | 2016-08-19 | 2016-09-29 | 60 | 0d |  |  | 232h |
| 71 | 9.1 | System Testing |  | 5d | 2016-08-19 | 2016-08-25 |  | 0d |  | Dhanjay Kaushik | 40h |
| 72 | 9.2 | Bug Fixing |  | 3d | 2016-08-26 | 2016-08-30 | 71 | 21d |  | Mankaran And Ambrish And Naresh And Shatrugan and Ajay Partap | 24h |
| 73 | 9.3 | Deployment For UAT | milestone | 4d | 2016-08-26 | 2016-08-31 | 71 | 0d |  |  |  |
| 74 | 9.4 | UAT | milestone | 15d | 2016-09-01 | 2016-09-21 | 73 | 0d |  | CLIENT | 120h |
| 75 | 9.5 | Bug Fixing |  | 6d | 2016-09-22 | 2016-09-29 | 74 | 0d |  | Mankaran And Ambrish And Naresh And Shatrugan and Ajay Partap | 48h |
| 76 | 9.6 | Go Live | milestone | 0d | 2016-09-29 | 2016-09-29 | 75 | 0d |  |  |  |
