# NoidaProject

Schedule from MS Project, 2016-03-24 to 2016-09-22.

## Calendars

- Standard: Mon-Fri 08:00-12:00, 13:00-17:00; Sat-Sun off.

## Resources

| Resource |
| --- |
| Gaurav Data |
| Ankit and vishal |
| Mankaran |
| Ambrish |
| Naresh |
| Shatrugan |
| Dhanjay Kaushik |
| Gaurav And Ankit And Arun |
| Mankaran And Ambrish And Naresh And Shatrugan |
| Mankaran And Ambrish And Naresh And Shatrugan and Ajay Partap |

## Schedule

| ID | WBS | Task | Duration | Start | Finish | Predecessors | Total slack | Free slack | Constraint | Resources | Work |
| --- | --- | --- | --- | --- | --- | --- | --- | --- | --- | --- | --- |
| 1 | 1 | **Sprint0** | 10d | 2016-03-24 | 2016-04-06 |  | 2d |  |  |  |  |
| 2 | 1.1 | Planning and Discussion | 10d | 2016-03-24 | 2016-04-06 |  | 2d | 0d | start no earlier than 2016-03-24 |  |  |
| 3 | 2 | **Sprint1** | 14d | 2016-04-07 | 2016-04-26 | 2 | 2d |  |  |  | 144h |
| 4 | 2.1 | User Management User Story | 7d | 2016-04-07 | 2016-04-15 |  | 2d | 0d |  | Gaurav And Ankit And Arun | 56h |
| 5 | 2.2 | Database Create | 1d | 2016-04-18 | 2016-04-18 | 4 | 8d |  |  | Ankit and vishal | 8h |
| 6 | 2.3 | Development+UI | 7d | 2016-04-18 | 2016-04-26 | 4 | 2d |  |  | Mankaran And Ambrish And Naresh And Shatrugan | 56h |
| 7 | 2.4 | Testing | 3d | 2016-04-18 | 2016-04-20 | 4 | 6d |  |  | Dhanjay Kaushik | 24h |
| 8 | 3 | **Sprint2** | 14d | 2016-04-29 | 2016-05-18 | 3 | 0d |  |  |  | 152h |
| 9 | 3.1 | Master Data Mangment User Story | 5d | 2016-04-29 | 2016-05-05 |  | 0d |  | start no earlier than 2016-04-29 | Gaurav And Ankit And Arun | 40h |
| 10 | 3.2 | Database Create | 1d | 2016-05-06 | 2016-05-06 | 9 | 8d |  |  | Ankit and vishal | 8h |
| 11 | 3.3 | Development+UI | 9d | 2016-05-06 | 2016-05-18 | 9 | 0d |  |  | Mankaran And Ambrish And Naresh And Shatrugan | 72h |
| 12 | 3.4 | Testing | 4d | 2016-05-06 | 2016-05-11 | 9 | 5d |  |  | Dhanjay Kaushik | 32h |
| 13 | 4 | **Sprint3** | 5d | 2016-05-19 | 2016-05-25 | 8 | 0d |  |  |  |  |
| 14 | 4.1 | **Comman component** | 5d | 2016-05-19 | 2016-05-25 |  | 0d |  |  |  |  |
| 15 | 4.1.1 | Crypto | 1d | 2016-05-19 | 2016-05-19 |  | 0d |  |  |  |  |
| 16 | 4.1.2 | Auditing | 1d | 2016-05-20 | 2016-05-20 | 15 | 0d |  |  |  |  |
| 17 | 4.1.3 | Security | 1d | 2016-05-23 | 2016-05-23 | 16 | 0d |  |  |  |  |
| 18 | 4.1.4 | Login | 1d | 2016-05-24 | 2016-05-24 | 17 | 0d |  |  |  |  |
| 19 | 4.1.5 | Exception Handling | 1d | 2016-05-25 | 2016-05-25 | 18 | 0d |  |  |  |  |
| 20 | 5 | **Sprint4** | 13d | 2016-05-26 | 2016-06-13 | 13 | 0d |  |  |  | 112h |
| 21 | 5.1 | Allotment process User Story | 4d | 2016-05-26 | 2016-05-31 |  | 0d |  |  | Gaurav And Ankit And Arun | 32h |
| 22 | 5.2 | Database Create | 1d | 2016-06-01 | 2016-06-01 | 21 | 8d |  |  | Ankit and vishal | 8h |
| 23 | 5.3 | Development+UI | 7d | 2016-06-01 | 2016-06-09 | 21 | 0d |  |  | Mankaran And Ambrish And Naresh And Shatrugan and Ajay Partap | 56h |
| 24 | 5.4 | Testing | 2d | 2016-06-10 | 2016-06-13 | 21, 23 | 0d |  |  | Dhanjay Kaushik | 16h |

| ID | WBS | Task | Type | Duration | Start | Finish | Predecessors | Total slack | Resources | Work |
| --- | --- | --- | --- | --- | --- | --- | --- | --- | --- | --- |
| 25 | 6 | **Sprint5** |  | 16d | 2016-06-14 | 2016-07-05 | 20 | 0d |  | 136h |
| 26 | 6.1 | Functional,Leass Deed, Mutation User Story |  | 4d | 2016-06-14 | 2016-06-17 |  | 0d | Gaurav And Ankit And Arun | 32h |
| 27 | 6.2 | Database Create |  | 1d | 2016-06-20 | 2016-06-20 | 26 | 11d | Ankit and vishal | 8h |
| 28 | 6.3 | Development+UI |  | 9d | 2016-06-20 | 2016-06-30 | 26 | 0d | Mankaran And Ambrish And Naresh And Shatrugan and Ajay Partap | 72h |
| 29 | 6.4 | Testing |  | 3d | 2016-07-01 | 2016-07-05 | 26, 28 | 0d | Dhanjay Kaushik | 24h |
| 30 | 7 | **Sprint6** |  | 16d | 2016-07-06 | 2016-07-27 | 25 | 0d |  | 136h |
| 31 | 7.1 | Mortgage,CIC and other User Story |  | 4d | 2016-07-06 | 2016-07-11 |  | 0d | Gaurav And Ankit And Arun | 32h |
| 32 | 7.2 | Database Create |  | 1d | 2016-07-12 | 2016-07-12 | 31 | 11d | Ankit and vishal | 8h |
| 33 | 7.3 | Development+UI |  | 9d | 2016-07-12 | 2016-07-22 | 31 | 0d | Mankaran And Ambrish And Naresh And Shatrugan and Ajay Partap | 72h |
| 34 | 7.4 | Testing |  | 3d | 2016-07-25 | 2016-07-27 | 31, 33 | 0d | Dhanjay Kaushik | 24h |
| 35 | 8 | **Sprint6** |  | 12d | 2016-07-28 | 2016-08-12 | 30 | 0d |  |  |
| 36 | 8.1 | Reporting User Story |  | 4d | 2016-07-28 | 2016-08-02 |  | 0d |  |  |
| 37 | 8.2 | Database Create |  | 1d | 2016-08-03 | 2016-08-03 | 36 | 7d |  |  |
| 38 | 8.3 | Development+UI |  | 6d | 2016-08-03 | 2016-08-10 | 36 | 0d |  |  |
| 39 | 8.4 | Testing |  | 2d | 2016-08-11 | 2016-08-12 | 36, 38 | 0d |  |  |
| 40 | 9 | **Sprint7** |  | 5d | 2016-08-15 | 2016-08-19 | 35 | 0d |  |  |
| 41 | 9.1 | System Integration |  | 5d | 2016-08-15 | 2016-08-19 |  | 0d |  |  |
| 42 | 10 | System Testing |  | 5d | 2016-08-22 | 2016-08-26 | 40 | 0d |  |  |
| 43 | 11 | Deployment For UAT | milestone | 4d | 2016-08-29 | 2016-09-01 | 42 | 0d |  |  |
| 44 | 12 | UAT | milestone | 15d | 2016-09-02 | 2016-09-22 | 43 | 0d |  |  |
| 45 | 13 | Go Live | milestone | 0d | 2016-09-22 | 2016-09-22 | 44 | 0d |  |  |
